# CVN73-PIA26

How a schedule from Primavera P6 changed from version to version. A marks actual dates.

## Version 1 (data date 2026-08-10, saved 2026-08-10)

Note of the change: Add a sample P6 schema, and the columns to receive it

| ID | WBS | Task | Duration | Start | Finish | Predecessors | Complete | Constraint |
| --- | --- | --- | --- | --- | --- | --- | --- | --- |
|  | PIA26 | **CVN-73 PIA-26** |  | 2026-07-29 | 2027-01-23 |  |  |  |
|  | MSTN | **Key Events** |  | 2026-11-20 | 2027-01-23 |  |  |  |
| M0100 |  | KEY EVENT — Undock | 0d | 2026-11-20 | 2026-11-20 | A2010 |  | finish on 2026-11-20 |
| M0200 |  | KEY EVENT — Fast Cruise | 0d | 2027-01-06 | 2027-01-06 |  |  |  |
| M0300 |  | KEY EVENT — Delivery | 0d | 2027-01-23 | 2027-01-23 | M0200 |  | finish on 2027-01-23 |
|  | Z5 | **Zone 5 — Hangar & Main Deck** |  | 2026-08-18 | 2026-11-13 |  |  |  |
|  | 130 | **130 Hull Decks** |  | 2026-08-18 | 2026-11-13 |  |  |  |
| A2010 |  | Hangar Bay 2 structural hot work | 0d | 2026-08-18 A | 2026-11-13 |  | 3% |  |
|  | Z6 | **Zone 6 — Aft Machinery & Berthing** |  | 2026-07-29 | 2026-12-18 |  |  |  |
|  | 431 | **431 Interior Communications** |  | 2026-08-07 | 2026-10-23 |  |  |  |
| A5010 |  | Cableway CW-3 — pull & terminate, Fr 152 | 0d | 2026-08-07 A | 2026-08-12 |  | 92% |  |
| A5020 |  | Cableway CW-3 — terminate in switchgear | 0d | 2026-08-10 A | 2026-08-17 | A5010 SS+2.4d | 13% |  |
| A3010 |  | Aft IC preservation & cableway closure | 0d | 2026-08-12 | 2026-08-21 |  |  | start on 2026-08-12 |
| A3020 |  | Switchboard No. 1 rip-out | 0d | 2026-09-19 | 2026-10-23 | A3010 |  |  |
|  | 506 | **506 Tanks & Voids** |  | 2026-08-01 | 2026-08-22 |  |  |  |
| A1010 |  | Reserve feed water tank preservation | 0d | 2026-08-01 A | 2026-08-14 |  | 75% |  |
| A1020 |  | Sounding & vent piping modification | 0d | 2026-08-15 | 2026-08-22 | A1010 |  |  |
|  | 512 | **512 Ventilation & Uptakes** |  | 2026-07-29 | 2026-12-18 |  |  |  |
| A4010 |  | HVAC trunk T1 — install & hang, Fr 172 | 0d | 2026-07-29 A | 2026-08-04 A |  | 100% |  |
| A4020 |  | HVAC trunk T1 — install & hang, Fr 160 | 0d | 2026-08-08 A | 2026-08-13 | A4010 | 79% |  |
| A4030 |  | HVAC branch B1 — mess decks | 0d | 2026-08-09 A | 2026-08-15 | A4020 SS+2.4d | 73% |  |
| A4040 |  | HVAC branch B2 — scullery | 0d | 2026-08-09 A | 2026-08-18 | A4030 SS+4.8d | 45% |  |
| A4050 |  | HVAC riser R1 — switchgear room penetration | 0d | 2026-08-10 A | 2026-08-16 | A5020, A6010 FS-0.8d | 30% |  |
| A3030 |  | Fan room duct insulation | 0d | 2026-11-14 | 2026-12-18 | A3010 |  |  |
|  | 631 | **631 Preservation** |  | 2026-08-10 | 2026-08-10 |  |  |  |
| A6010 |  | Coat final — cable trunk & IC space Fr 160 | 0d | 2026-08-10 A | 2026-08-10 |  | 60% |  |

## Version 2 (data date 2026-08-10, saved 2026-08-12)

Note of the change: The XER import reports WHERE, graded per path, before Confirm

Last finish stays 2027-01-23.

Changed:

| ID | Task | Other |
| --- | --- | --- |
| A4040 | HVAC branch B2 — scullery (3-185-0-L) | was named HVAC branch B2 — scullery |

## Version 3 (data date 2026-08-10, saved 2026-08-12)

Note of the change: The WBS knows which zone, and now the board listens

Last finish stays 2027-01-23.

Added:

| ID | Task | Duration | Start | Finish |
| --- | --- | --- | --- | --- |
| A2020 | Hangar bay staging & lay-down | 0d | 2026-08-20 | 2026-09-05 |
